# Big Project Schedule Template

Schedule from MS Project, 2020-05-01 to 2022-05-02, status date 2020-06-25, costs in $, A marks actual dates.
01

## Calendars

- Standard: Mon-Fri 08:00-12:00, 13:00-17:00; Sat-Sun off.

## Resources

| Resource | Rate |
| --- | --- |
| Automation Consultant | 44 |
| Hardware Designer | 44 |
| Documentation Specialists | 44 |
| Automation Lead Engineer | 44 |
| Project Assistant | 44 |
| Project Manager | 44 |
| Automation Engineer I | 44 |
| Automation Engineer II | 44 |
| LCS-Support/Site Service Systems En | 44 |
| Lead Engineer - Site Resident | 44 |
| MES Engineer - Site Resident | 44 |
| MES Consultant | 44 |
| MES Engineer | 44 |
| MES Lead Engineer | 44 |
| Program Manager | 44 |
| Automation Senior Lead Engineer | 44 |
| LCS-Site Lead Engineer | 44 |
| LCS-Project Manager | 44 |
| LCS-Site Service Engineer | 44 |

## Schedule

| ID | WBS | Task | Type | Duration | Start | Finish | Predecessors | Remaining | Baseline start | Baseline finish | Baseline duration | Total slack | Free slack | Resources | Work | Cost | Sub Project ID | Import Comments | Text5 | Activity ID | Responsible | Activity Status | Text11 |
| --- | --- | --- | --- | --- | --- | --- | --- | --- | --- | --- | --- | --- | --- | --- | --- | --- | --- | --- | --- | --- | --- | --- | --- |
| 1 | 1 | **Project Schedule** |  | 522d | 2020-05-01 A | 2022-05-02 |  | 522d |  |  |  | 0d |  |  | 405h | 16,235.42 | 10000 | Modified | P2664 |  |  |  |  |
| 2 | 1.1 | **Administration** |  | 522d | 2020-05-01 A | 2022-05-02 |  | 522d |  |  |  | 0d |  |  | 126h | 3,960 | 11000 | Modified | P2664 |  |  |  |  |
| 3 | 1.1.1 | PROJECTNAME - Project Management |  | 521.97d | 2020-05-01 A | 2022-05-02 |  | 521.97d | 2020-05-01 | 2022-05-02 | 0d | 0d |  | Project Manager | 9h | 396 | 11000 | Modified | P2664 | 11010 | Paul McKinney | Planned | 100029255 |
| 4 | 1.1.2 | PROJECTNAME - Project Management Assistance |  | 522d | 2020-05-01 | 2022-05-02 |  |  | 2020-05-01 | 2022-05-02 | 0d | 0d |  | Project Assistant | 9h | 396 | 11000 | Modified | P2664 | 11020 | Paul McKinney | Planned | 100029256 |
| 5 | 1.1.3 | PROJECTNAME - Meetings LEAD |  | 420.25d | 2020-05-01 A | 2021-12-10 |  | 420.25d | 2020-05-01 | 2022-05-02 | 0d | 101.75d |  | Automation Lead Engineer | 9h | 396 | 11000 | Modified | P2664 | 11030 | Paul McKinney | Planned | 100029258 |
| 6 | 1.1.4 | PROJECTNAME - Meetings ENGR1 |  | 481.12d | 2020-05-01 A | 2022-03-07 |  | 481.12d | 2020-05-01 | 2022-05-02 | 0d | 40.88d |  | Automation Engineer I | 9h | 396 | 11000 | Modified | P2664 | 11040 | Paul McKinney | Planned | 100029259 |
| 7 | 1.1.5 | PROJECTNAME - Meetings ENGR2 |  | 479.98d | 2020-05-01 A | 2022-03-03 |  | 479.98d | 2020-05-01 | 2022-05-02 | 0d | 42.02d |  | Automation Engineer II | 9h | 396 | 11000 | Modified | P2664 | 11050 | Paul McKinney | Planned | 100029260 |
| 8 | 1.1.6 | PROJECTNAME - Meetings SSSENG |  | 522d | 2020-05-01 | 2022-05-02 |  |  |  |  |  | 0d |  | LCS-Support/Site Service Systems En | 9h | 396 | 11000 | Modified | P2664 | 11075 | Paul McKinney | Planned | 100032838 |
| 9 | 1.1.7 | PROJECTNAME - Travel Time LEAD |  | 522d | 2020-05-01 | 2022-05-02 |  |  | 2020-05-01 | 2022-05-02 | 0d | 0d |  | Automation Lead Engineer | 9h | 396 | 11000 | Modified | P2664 | 11080 | Paul McKinney | Planned | 100029266 |
| 10 | 1.1.8 | PROJECTNAME - Travel Time PRJMGR |  | 522d | 2020-05-01 | 2022-05-02 |  |  | 2020-05-01 | 2022-05-02 | 0d | 0d |  | Project Manager | 9h | 396 | 11000 | Modified | P2664 | 11100 | Paul McKinney | Planned | 100029257 |
| 11 | 1.1.9 | PROJECTNAME - Documentation Specialist |  | 522d | 2020-05-01 | 2022-05-02 |  |  | 2020-05-01 | 2022-05-02 | 0d | 0d |  | Documentation Specialists | 9h | 396 | 11000 | Modified | P2664 | 11110 | Paul McKinney | Planned | 100029262 |
| 12 | 1.1.10 | PROJECTNAME - Project Internal KickOff MS |  | 1.12d | 2020-05-01 | 2020-05-04 |  |  | 2020-06-10 | 2020-06-10 | 0d | 294.88d | 0d |  | 9h |  | 11000 | Modified | P2664 | 11130 | Paul McKinney | Planned | 100030453 |
| 13 | 1.1.11 | PROJECTNAME - Internal Lessons Learned MS |  | 1.12d | 2020-05-22 | 2020-05-25 | 62FS+40h |  | 2021-09-24 | 2021-09-24 | 0d | 499.75d | 0d |  | 9h |  | 11000 | Modified | P2664 | 11140 | Paul McKinney | Planned | 100030454 |
| 14 | 1.1.12 | PROJECTNAME - Customer Lessons Learned MS |  | 1.12d | 2020-06-01 | 2020-06-02 | 13FS+40h |  | 2021-10-01 | 2021-10-01 | 0d | 499.75d |  |  | 9h |  | 11000 | Modified | P2664 | 11150 | Paul McKinney | Planned | 100030455 |
| 15 | 1.1.13 | PROJECTNAME - Contingency |  | 522d | 2020-05-01 | 2022-05-02 |  |  | 2020-05-01 | 2022-05-02 | 0d | 0d |  | Project Manager | 9h | 396 | 11000 | Modified | P2664 | 11160 | Paul McKinney | Planned | 100030456 |
| 16 | 1.1.14 | PROJECTNAME - Administrative Expenses |  | 522d | 2020-05-01 A | 2022-05-02 |  | 522d | 2020-05-01 | 2022-05-02 | 0d | 0d |  |  | 9h |  | 11000 | Modified | P2664 | EXPENSE | Paul McKinney | Planned | 100029263 |
| 17 | 1.2 | **DeltaV Software Requirements And Design** |  | 50.59d | 2020-05-22 A | 2020-08-03 |  | 50.59d |  |  |  | 455.41d |  |  | 18h | 792 | 12000 | Modified | P2664 |  |  |  |  |
| 18 | 1.2.1 | PROJECTNAME - DeltaV Requirements Documents |  | 2.7d | 2020-05-22 A | 2020-05-27 |  | 2.7d |  |  |  | 20.31d |  | Automation Lead Engineer | 9h | 396 | 12000 | Modified | P2664 | 12010 | Paul McKinney | Planned | 100030457 |
| 19 | 1.2.2 | PROJECTNAME - DeltaV Design Document |  | 22.58d | 2020-06-25 A | 2020-07-27 | 18 | 22.58d |  |  |  | 0d |  | Automation Lead Engineer | 9h | 396 | 12000 | Modified | P2664 | 12030 | Paul McKinney | Planned | 100030459 |
| 20 | 1.2.3 | PROJECTNAME - DeltaV Design Review MS | milestone | 0d | 2020-07-20 | 2020-07-20 | 19FS-40h |  |  |  |  | 0d |  |  |  |  | 12000 | Modified | P2664 | 12032 | Paul McKinney | Planned | 100030464 |
| 21 | 1.2.4 | PROJECTNAME - DeltaV Design Approval MS | milestone | 0d | 2020-08-03 | 2020-08-03 | 20FS+80h |  |  |  |  | 455.41d |  |  |  |  | 12000 | Modified | P2664 | 12033 | Paul McKinney | Planned | 100030465 |
| 22 | 1.3 | **DeltaV Hardware Design** |  | 139.59d | 2020-05-01 | 2020-11-12 |  |  |  |  |  | 348.07d |  |  | 54h | 2,375.83 | 13000 | Modified | P2664 |  |  |  |  |
| 23 | 1.3.1 | PROJECTNAME - Hardware Design |  | 97d | 2020-05-01 | 2020-09-14 |  |  | 2020-11-06 | 2021-03-23 | 0d | 348.07d | 0d | Automation Lead Engineer | 9h | 396 | 13000 | Modified | P2664 | 13010 | Paul McKinney | Planned | 100031304 |
| 24 | 1.3.2 | PROJECTNAME - Drawings |  | 46d | 2020-05-29 | 2020-07-31 | 23SS+160h |  | 2021-01-19 | 2021-03-23 | 0d | 348.07d | 0d | Hardware Designer | 9h | 396 | 13000 | Modified | P2664 | 13020 | Paul McKinney | Planned | 100031305 |
| 25 | 1.3.3 | PROJECTNAME - Drawings Review |  | 10.42d | 2020-08-03 | 2020-08-17 | 24 |  | 2021-03-23 | 2021-04-07 | 0d | 348.07d | 0d | Hardware Designer | 9h | 395.95 | 13000 | Modified | P2664 | 13030 | Paul McKinney | Planned | 100031306 |
| 26 | 1.3.4 | PROJECTNAME - Drawings Updates |  | 4.17d | 2020-08-17 | 2020-08-21 | 25 |  | 2021-04-07 | 2021-04-13 | 0d | 348.07d | 0d | Hardware Designer | 9h | 395.88 | 13000 | Modified | P2664 | 13040 | Paul McKinney | Planned | 100031307 |
| 27 | 1.3.5 | PROJECTNAME - Drawings Approval MS | milestone | 0d | 2020-08-21 | 2020-08-21 | 26 |  | 2021-04-13 | 2021-04-13 | 0d | 348.07d | 0d |  |  |  | 13000 | Modified | P2664 | 13050 | Paul McKinney | Planned | 100031308 |
| 28 | 1.3.6 | PROJECTNAME - DeltaV Hardware Quote |  | 4d | 2020-08-21 | 2020-08-27 | 27 |  | 2021-04-13 | 2021-04-19 | 0d | 348.07d | 0d | Automation Lead Engineer | 9h | 396 | 13000 | Modified | P2664 | 13060 | Paul McKinney | Planned | 100031309 |
| 29 | 1.3.7 | PROJECTNAME - DeltaV Hardware Quote Review MS | milestone | 0d | 2020-08-27 | 2020-08-27 | 28 |  | 2021-04-19 | 2021-04-19 | 0d | 348.07d | 0d |  |  |  | 13000 | Modified | P2664 | 13070 | Paul McKinney | Planned | 100031310 |
| 30 | 1.3.8 | PROJECTNAME - DeltaV Hardware Purchase Order MS | milestone | 0d | 2020-10-08 | 2020-10-08 | 29FS+240h |  | 2021-04-23 | 2021-04-23 | 0d | 348.07d | 0d |  |  |  | 13000 | Modified | P2664 | 13080 | Paul McKinney | Planned | 100031311 |
| 31 | 1.3.9 | PROJECTNAME - Panel Fab Coordination/Cutover Plan |  | 25d | 2020-10-08 | 2020-11-12 | 30 |  | 2021-04-23 | 2021-05-28 | 0d | 382.41d |  | Hardware Designer | 9h | 396 | 13000 | Modified | P2664 | 13090 | Paul McKinney | Planned | 100031312 |

| ID | WBS | Task | Type | Duration | Start | Finish | Predecessors | Remaining | Baseline start | Baseline finish | Baseline duration | Total slack | Free slack | Resources | Work | Cost | Sub Project ID | Import Comments | Text5 | Activity ID | Responsible | Activity Status | Text11 |
| --- | --- | --- | --- | --- | --- | --- | --- | --- | --- | --- | --- | --- | --- | --- | --- | --- | --- | --- | --- | --- | --- | --- | --- |
| 32 | 1.4 | **DeltaV Infrastructure** |  | 59.34d | 2020-10-08 | 2020-12-30 |  |  |  |  |  | 348.07d |  |  | 45h | 1,979.63 | 14000 | Modified | P2664 |  |  |  |  |
| 33 | 1.4.1 | PROJECTNAME - DeltaV Servers Ordered MS | milestone | 0d | 2020-10-08 | 2020-10-08 | 30 |  | 2021-05-14 | 2021-05-14 | 0d | 348.07d | 0d |  |  |  | 14000 | Modified | P2664 | 14005 | Paul McKinney | Planned | 100031313 |
| 34 | 1.4.2 | PROJECTNAME - DeltaV Servers Arrive MS | milestone | 0d | 2020-11-19 | 2020-11-19 | 33FS+240h |  | 2021-06-24 | 2021-06-24 | 0d | 348.07d | 0d |  |  |  | 14000 | Modified | P2664 | 14006 | Paul McKinney | Planned | 100031314 |
| 35 | 1.4.3 | PROJECTNAME - Rack Assembly |  | 5.33d | 2020-11-19 | 2020-11-26 | 34 |  | 2021-06-25 | 2021-07-02 | 0d | 348.07d | 0d | LCS-Support/Site Service Systems En | 9h | 395.94 | 14000 | Modified | P2664 | 14010 | Paul McKinney | Planned | 100031315 |
| 36 | 1.4.4 | PROJECTNAME - Server Setup |  | 10.67d | 2020-11-26 | 2020-12-11 | 35 |  | 2021-07-02 | 2021-07-16 | 0d | 348.07d | 0d | LCS-Support/Site Service Systems En | 9h | 395.95 | 14000 | Modified | P2664 | 14020 | Paul McKinney | Planned | 100031316 |
| 37 | 1.4.5 | PROJECTNAME - Operator Station Setup |  | 6.67d | 2020-12-11 | 2020-12-22 | 36 |  | 2021-07-19 | 2021-07-27 | 0d | 348.07d | 0d | LCS-Support/Site Service Systems En | 9h | 395.93 | 14000 | Modified | P2664 | 14030 | Paul McKinney | Planned | 100031317 |
| 38 | 1.4.6 | PROJECTNAME - Backup & Recovery Plan & Install |  | 4d | 2020-12-22 | 2020-12-28 | 37 |  | 2021-07-27 | 2021-08-02 | 0d | 348.07d | 0d | LCS-Support/Site Service Systems En | 9h | 396 | 14000 | Modified | P2664 | 14040 | Paul McKinney | Planned | 100031318 |
| 39 | 1.4.7 | PROJECTNAME - McAfee ePO Plan & Install |  | 2.67d | 2020-12-28 | 2020-12-30 | 38 |  | 2021-08-02 | 2021-08-05 | 0d | 348.07d |  | LCS-Support/Site Service Systems En | 9h | 395.81 | 14000 | Modified | P2664 | 14050 | Paul McKinney | Planned | 100031319 |
| 40 | 1.5 | **DeltaV System Development** |  | 57.66d | 2020-07-20 A | 2020-10-07 |  | 57.66d |  |  |  | 323.34d |  |  | 27h | 1,187.95 | 15000 | Modified | P2664 |  |  |  |  |
| 41 | 1.5.1 | PROJECTNAME - DeltaV Base Build |  | 22.66d | 2020-07-20 A | 2020-08-19 | 20 | 22.66d |  |  |  | 323.34d | 0d | Automation Engineer I | 9h | 395.95 | 15000 | Modified | P2664 | 15010 | Paul McKinney | Planned | 100031320 |
| 42 | 1.5.2 | PROJECTNAME - DeltaV Graphics |  | 16d | 2020-08-19 | 2020-09-10 | 41 |  |  |  |  | 342.34d | 19d | Automation Engineer I | 9h | 396 | 15000 | Modified | P2664 | 15014 | Paul McKinney | Planned | 100031321 |
| 43 | 1.5.3 | PROJECTNAME - DeltaV Logic |  | 35d | 2020-08-19 | 2020-10-07 | 41 |  |  |  |  | 323.34d | 0d | Automation Lead Engineer | 9h | 396 | 15000 | Modified | P2664 | 15030 | Paul McKinney | Planned | 100031325 |
| 44 | 1.6 | **DeltaV System Test Planning** |  | 109d | 2020-05-01 | 2020-09-30 |  |  |  |  |  | 413d |  |  | 9h | 396 | 16000 | Modified | P2664 |  |  |  |  |
| 45 | 1.6.1 | PROJECTNAME - Preliminary Screens Approvals Complete MS | milestone | 0d | 2020-05-01 | 2020-05-01 |  |  | 2021-02-19 | 2021-02-19 | 0d | 522d |  |  |  |  | 16000 | Modified | P2664 | 16010 | Paul McKinney | Planned | 100031335 |
| 46 | 1.6.2 | PROJECTNAME - DeltaV Test Protocol Development |  | 109d | 2020-05-01 | 2020-09-30 |  |  | 2021-01-08 | 2021-06-10 | 0d | 413d |  | Automation Lead Engineer | 9h | 396 | 16000 | Modified | P2664 | 16020 | Paul McKinney | Planned | 100031336 |
| 47 | 1.7 | **DeltaV System Integration** |  | 27d | 2020-10-07 | 2020-11-13 |  |  |  |  |  | 323.34d |  |  | 9h | 396 | 17000 | Modified | P2664 |  |  |  |  |
| 48 | 1.7.1 | PROJECTNAME - DeltaV Developer Testing |  | 27d | 2020-10-07 | 2020-11-13 | 42, 43 |  | 2020-10-13 | 2020-11-19 | 0d | 323.34d | 0d | Automation Lead Engineer | 9h | 396 | 17000 | Modified | P2664 | 17010 | Paul McKinney | Planned | 100031337 |
| 49 | 1.7.2 | PROJECTNAME - DeltaV Developer Testing Complete MS | milestone | 0d | 2020-11-13 | 2020-11-13 | 48 |  | 2021-04-28 | 2021-04-28 | 0d | 323.34d | 0d |  |  |  | 17000 | Modified | P2664 | 17060 | Paul McKinney | Planned | 100032383 |
| 50 | 1.8 | **DeltaV Factory Acceptance Test** |  | 226d | 2020-05-04 | 2021-03-16 |  |  |  |  |  | 294.88d |  |  | 18h | 792 | 18000 | Modified | P2664 |  |  |  |  |
| 51 | 1.8.1 | PROJECTNAME - DeltaV System Setup & Support |  | 226d | 2020-05-04 | 2021-03-16 | 12 |  | 2020-06-10 | 2021-04-21 | 0d | 294.88d |  | Automation Lead Engineer | 9h | 396 | 18000 | Modified | P2664 | 18010 | Paul McKinney | Planned | 100031344 |
| 52 | 1.8.2 | PROJECTNAME - DeltaV FAT |  | 5d | 2020-11-13 | 2020-11-20 | 49 |  | 2021-04-28 | 2021-05-05 | 0d | 323.34d | 0d | Automation Lead Engineer | 9h | 396 | 18000 | Modified | P2664 | 18020 | Paul McKinney | Planned | 100031345 |
| 53 | 1.8.3 | PROJECTNAME - DeltaV Indy FAT MS | milestone | 0d | 2020-11-20 | 2020-11-20 | 52 |  | 2021-06-02 | 2021-06-02 | 0d | 323.34d | 0d |  |  |  | 18000 | Modified | P2664 | 18070 | Paul McKinney | Planned | 100031346 |
| 54 | 1.9 | **DeltaV System Commisioning** |  | 111d | 2020-05-01 | 2020-10-02 |  |  |  |  |  | 411d |  |  | 54h | 2,376 | 19000 | Modified | P2664 |  |  |  |  |
| 55 | 1.9.1 | PROJECTNAME - Shutdown MS | milestone | 0d | 2020-05-01 | 2020-05-01 |  |  | 2021-09-06 | 2021-09-06 | 0d | 411d | 0d |  |  |  | 19000 | Modified | P2664 | 19010 | Paul McKinney | Planned | 100031347 |
| 56 | 1.9.2 | PROJECTNAME - System Com Project Management |  | 111d | 2020-05-01 | 2020-10-02 | 55 |  | 2021-09-06 | 2022-02-07 | 0d | 411d |  | Project Manager | 9h | 396 | 19000 | Modified | P2664 | 19020 | Paul McKinney | Planned | 100031348 |
| 57 | 1.9.3 | PROJECTNAME - DeltaV Configuration Migration |  | 4.7d | 2020-05-01 | 2020-05-07 | 55 |  | 2021-09-06 | 2021-09-10 | 0d | 411.3d | 0d | LCS-Support/Site Service Systems En | 9h | 396 | 19000 | Modified | P2664 | 19030 | Paul McKinney | Planned | 100031349 |
| 58 | 1.9.4 | PROJECTNAME - On-Site Startup |  | 106d | 2020-05-07 | 2020-10-02 | 57 |  | 2021-09-10 | 2022-02-07 | 0d | 411.3d |  | Automation Lead Engineer | 9h | 396 | 19000 | Modified | P2664 | 19040 | Paul McKinney | Planned | 100031350 |
| 59 | 1.9.5 | PROJECTNAME - On-Site Startup (OT 1.5X) |  | 106d | 2020-05-07 | 2020-10-02 | 57 |  | 2021-09-10 | 2022-02-07 | 0d | 411.3d |  | Automation Lead Engineer | 9h | 396 | 19000 | Modified | P2664 | 19050 | Paul McKinney | Planned | 100031351 |
| 60 | 1.9.6 | PROJECTNAME - On-Site Startup (OT 2X) |  | 106d | 2020-05-07 | 2020-10-02 | 57 |  | 2021-09-10 | 2022-02-07 | 0d | 411.3d |  | Automation Lead Engineer | 9h | 396 | 19000 | Modified | P2664 | 19060 | Paul McKinney | Planned | 100031352 |
| 61 | 1.9.7 | PROJECTNAME - System Com Travel Time |  | 106d | 2020-05-07 | 2020-10-02 | 57 |  | 2021-09-10 | 2022-02-07 | 0d | 411.3d |  | Automation Lead Engineer | 9h | 396 | 19000 | Modified | P2664 | 19070 | Paul McKinney | Planned | 100031353 |
| 62 | 1.9.8 | PROJECTNAME - Startup MS | milestone | 0d | 2020-05-14 | 2020-05-14 | 55SF+80h |  | 2021-09-17 | 2021-09-17 | 0d | 499.75d | 0d |  |  |  | 19000 | Modified | P2664 | 19080 | Paul McKinney | Planned | 100031354 |
| 63 | 1.9.9 | PROJECTNAME - System Commissioning Expenses |  | 106d | 2020-05-01 | 2020-09-25 | 55 |  | 2021-09-06 | 2022-01-31 | 0d | 416d |  |  |  |  | 19000 | Modified | P2664 | EXPENSE | Paul McKinney | Planned | 100031355 |

| ID | WBS | Task | Type | Duration | Start | Finish | Predecessors | Baseline start | Baseline finish | Baseline duration | Total slack | Free slack | Resources | Work | Cost | Sub Project ID | Import Comments | Text5 | Activity ID | Responsible | Activity Status | Text11 |
| --- | --- | --- | --- | --- | --- | --- | --- | --- | --- | --- | --- | --- | --- | --- | --- | --- | --- | --- | --- | --- | --- | --- |
| 64 | 1.10 | **DeltaV Knowledge Transfer** |  | 53d | 2020-11-20 | 2021-02-03 |  |  |  |  | 323.34d |  |  | 45h | 1,980 | 20000 | Modified | P2664 |  |  |  |  |
| 65 | 1.10.1 | PROJECTNAME - DeltaV Operator Training Project Management |  | 26d | 2020-11-20 | 2020-12-28 | 53 | 2021-06-02 | 2021-07-08 | 0d | 350.34d |  | Project Manager | 9h | 396 | 20000 | Modified | P2664 | 20010 | Paul McKinney | Planned | 100031356 |
| 66 | 1.10.2 | PROJECTNAME - DeltaV Operator Training Project Management Assistance |  | 26d | 2020-11-20 | 2020-12-28 | 53 | 2021-06-02 | 2021-07-08 | 0d | 350.34d |  | Project Assistant | 9h | 396 | 20000 | Modified | P2664 | 20020 | Paul McKinney | Planned | 100031357 |
| 67 | 1.10.3 | PROJECTNAME - DeltaV Operator Training Material |  | 26d | 2020-11-20 | 2020-12-28 | 53 | 2021-06-02 | 2021-07-08 | 0d | 324.34d | 0d | Automation Lead Engineer | 9h | 396 | 20000 | Modified | P2664 | 20030 | Paul McKinney | Planned | 100031358 |
| 68 | 1.10.4 | PROJECTNAME - DeltaV Operator Training Begins MS | milestone | 0d | 2020-12-28 | 2020-12-28 | 67 | 2021-07-08 | 2021-07-08 | 0d | 324.34d | 0d |  |  |  | 20000 | Modified | P2664 | 20040 | Paul McKinney | Planned | 100031359 |
| 69 | 1.10.5 | PROJECTNAME - DeltaV Operator Training |  | 26d | 2020-12-28 | 2021-02-02 | 68 | 2021-07-08 | 2021-08-13 | 0d | 324.34d |  | Automation Lead Engineer | 9h | 396 | 20000 | Modified | P2664 | 20050 | Paul McKinney | Planned | 100031360 |
| 70 | 1.10.6 | PROJECTNAME - DeltaV Operator Training Travel Time |  | 53d | 2020-11-20 | 2021-02-03 | 53 | 2021-06-02 | 2021-08-16 | 0d | 323.34d |  | Automation Lead Engineer | 9h | 396 | 20000 | Modified | P2664 | 20090 | Paul McKinney | Planned | 100031364 |
| 71 | 1.10.7 | PROJECTNAME - DeltaV Operator Training Expenses |  | 53d | 2020-11-20 | 2021-02-03 | 53 | 2021-06-02 | 2021-08-16 | 0d | 323.34d |  |  |  |  | 20000 | Modified | P2664 | EXPENSE | Paul McKinney | Planned | 100031365 |
| 72 | 2 | **Milestone Invoicing** |  | 80.59d | 2020-05-01 | 2020-08-21 |  |  |  |  | 441.41d |  |  |  |  | 90000 | Modified | P2664 |  |  |  |  |
| 73 | 2.1 | PROJECTNAME - Order Placement | milestone | 0d | 2020-05-01 | 2020-05-01 |  | 2020-05-01 | 2020-05-01 | 0d | 522d |  |  |  |  | 90000 | Modified | P2664 | 91010 | Paul McKinney | Released | 100029267 |
| 74 | 2.2 | PROJECTNAME - Software Design Complete | milestone | 0d | 2020-05-01 | 2020-05-01 |  |  |  |  | 522d |  |  |  |  | 90000 | Modified | P2664 | 91020 | Paul McKinney | Released | 100029268 |
| 75 | 2.3 | PROJECTNAME - Hardware Design Complete | milestone | 0d | 2020-08-21 | 2020-08-21 | 27 | 2021-04-13 | 2021-04-13 | 0d | 441.41d |  |  |  |  | 90000 | Modified | P2664 | 91030 | Paul McKinney | Released | 100029269 |
| 76 | 2.4 | PROJECTNAME - Integration Testing Complete | milestone | 0d | 2020-05-01 | 2020-05-01 |  |  |  |  | 522d |  |  |  |  | 90000 | Modified | P2664 | 91040 | Paul McKinney | Released | 100029270 |
| 77 | 2.5 | PROJECTNAME - FAT Complete | milestone | 0d | 2020-05-01 | 2020-05-01 |  |  |  |  | 522d |  |  |  |  | 90000 | Modified | P2664 | 91050 | Paul McKinney | Released | 100029271 |
| 78 | 2.6 | PROJECTNAME - Installation Complete | milestone | 0d | 2020-05-07 | 2020-05-07 | 57 | 2021-09-10 | 2021-09-10 | 0d | 517.3d |  |  |  |  | 90000 | Modified | P2664 | 91060 | Paul McKinney | Released | 100029272 |
