# Lilly B132 Schedule Template

Schedule from MS Project, 2019-07-11 to 2020-02-18, status date 2020-01-28, costs in $.
Cornerstone Controls, Inc.

## Calendars

- Standard: Mon-Fri 08:00-12:00, 13:00-17:00; Sat-Sun off.

## Resources

| Resource | Rate |
| --- | --- |
| Paul McKinney | 135 |
| Charly Frechin |  |
| LEAD DeltaV | 140 |
| ENGR2 DeltaV | 130 |
| LILLY COORD |  |

## Schedule

| ID | WBS | Task | Duration | Start | Finish | Predecessors | Total slack | Free slack | Resources | Work | Cost |
| --- | --- | --- | --- | --- | --- | --- | --- | --- | --- | --- | --- |
| 1 | 1 | **PROJECTNAME** | 158.61d? | 2019-07-11 | 2020-02-18 |  | 0d |  |  | 943.32h | 127,622.37 |
| 2 | 1.1 | Project Management | 94.53d? | 2019-07-11 | 2019-11-20 |  | 64.08d |  | Paul McKinney [8%] | 60.5h | 8,167.5 |
| 3 | 1.2 | Project Launch | 1d | 2019-07-11 | 2019-07-11 |  | 0d |  |  | 6h |  |
| 4 | 1.3 | **User Requirements** | 10d | 2019-07-11 | 2019-07-24 |  | 148.61d |  |  |  |  |
| 5 | 1.3.1 | Change Request | 5d | 2019-07-11 | 2019-07-17 |  | 148.61d | 0d |  |  |  |
| 6 | 1.3.2 | Approve Change Request | 5d | 2019-07-18 | 2019-07-24 | 5 | 148.61d |  |  |  |  |
| 7 | 1.4 | **Development** | 90.67d | 2019-07-12 | 2019-11-15 |  | 0d |  |  | 516.82h | 72,354.98 |
| 8 | 1.4.1 | DeltaV Base Build | 17d | 2019-07-12 | 2019-08-05 | 3 | 0d |  | LEAD DeltaV [75%] | 102h | 14,280 |
| 9 | 1.4.2 | DeltaV Graphics | 3.67d | 2019-08-06 | 2019-08-09 | 8 | 0d |  | LEAD DeltaV [75%] | 22h | 3,080 |
| 10 | 1.4.3 | DeltaV Procedure Code | 26d | 2019-08-09 | 2019-09-16 | 9 | 0d |  | LEAD DeltaV [75%] | 156h | 21,840 |
| 11 | 1.4.4 | Create Simulation / System Integration | 6.95d | 2019-09-16 | 2019-09-25 | 10 | 0d |  | LEAD DeltaV [80%] | 44.5h | 6,230 |
| 12 | 1.4.5 | **Development Testing And Review** | 32.05d | 2019-09-25 | 2019-11-08 |  | 0d |  |  | 192.32h | 26,924.97 |
| 13 | 1.4.5.1 | Developer Testing | 22.38d | 2019-09-25 | 2019-10-25 | 11 | 0d |  | LEAD DeltaV [75%] | 134.28h | 18,799.38 |
| 14 | 1.4.5.2 | Customer Walk Through | 2.42d | 2019-10-28 | 2019-10-30 | 13 | 0d |  | LEAD DeltaV [75%] | 14.5h | 2,030 |
| 15 | 1.4.5.3 | Source Code Review | 7.26d | 2019-10-30 | 2019-11-08 | 14 | 0d |  | LEAD DeltaV [75%] | 43.54h | 6,095.6 |
| 16 | 1.4.6 | Alarm Rationalization Review & Approval | 5d | 2019-11-08 | 2019-11-15 | 15 | 66.94d |  |  |  |  |
| 17 | 1.4.7 | Functional Spec Review & Approval | 5d | 2019-11-08 | 2019-11-15 | 15 | 0d |  |  |  |  |
| 18 | 1.5 | **Test Case Development** | 2d | 2019-11-08 | 2019-11-12 |  | 3d |  |  |  |  |
| 19 | 1.5.1 | Trace Matrix Updates | 1d | 2019-11-08 | 2019-11-11 | 15, 13 | 3d | 0d |  |  |  |
| 20 | 1.5.2 | Trace Matrix Review | 1d | 2019-11-11 | 2019-11-12 | 19 | 3d |  |  |  |  |
| 21 | 1.6 | **Testing** | 50.53d | 2019-11-15 | 2020-01-27 |  | 0d |  |  | 330h | 42,899.89 |
| 22 | 1.6.1 | Structural Testing | 24.26d | 2019-11-15 | 2019-12-19 | 20, 17, 15 | 0d |  | ENGR2 DeltaV [85%] | 165h | 21,449.89 |
| 23 | 1.6.2 | Functional Testing | 24.26d | 2019-12-19 | 2020-01-23 | 22 | 0d |  | ENGR2 DeltaV [85%] | 165h | 21,450 |
| 24 | 1.6.3 | Test Case Summary Report | 1d | 2020-01-23 | 2020-01-24 | 23 | 0d |  |  |  |  |
| 25 | 1.6.4 | Test Case Summary Approval | 1d | 2020-01-24 | 2020-01-27 | 24 | 0d |  |  |  |  |

| ID | WBS | Task | Duration | Start | Finish | Predecessors | Total slack | Resources | Work | Cost |
| --- | --- | --- | --- | --- | --- | --- | --- | --- | --- | --- |
| 26 | 1.7 | **C & Q** | 16.41d | 2020-01-27 | 2020-02-18 |  | 0d |  | 30h | 4,200 |
| 27 | 1.7.1 | Update Drawings | 2d | 2020-01-27 | 2020-01-29 | 25 | 0d |  |  |  |
| 28 | 1.7.2 | Update Guardian | 2d | 2020-01-29 | 2020-01-31 | 27 | 0d |  |  |  |
| 29 | 1.7.3 | Migration to Prod | 2d | 2020-01-31 | 2020-02-04 | 28 | 0d |  |  |  |
| 30 | 1.7.4 | C&Q Execution | 4d | 2020-02-04 | 2020-02-10 | 29 | 6.41d |  |  |  |
| 31 | 1.7.5 | C&Q Support | 4.41d | 2020-02-04 | 2020-02-10 | 29 | 0d | LEAD DeltaV [85%] | 30h | 4,200 |
| 32 | 1.7.6 | FS Review | 2d | 2020-02-10 | 2020-02-12 | 31 | 0d |  |  |  |
| 33 | 1.7.7 | TSR Review | 2d | 2020-02-12 | 2020-02-14 | 32 | 0d |  |  |  |
| 34 | 1.7.8 | Quality Approval of Implementation | 2d | 2020-02-14 | 2020-02-18 | 33 | 0d |  |  |  |
