# P2677 CBRE-B358 Steam Cond Mon-Schedule

Schedule from MS Project, 2020-06-30 to 2020-12-24, status date 2020-08-20, costs in $, A marks actual dates.
Cornerstone Controls, Inc.

## Calendars

- Standard: Mon-Fri 08:00-12:00, 13:00-17:00; Sat-Sun off.

## Resources

| Resource | Rate |
| --- | --- |
| Paul McKinney | 135 |
| Charlie Frechin | 140 |
| ENGR1 DeltaV | 140 |
| ENGR2 DeltaV | 140 |
| Larry Frechin | 140 |
| LEAD DeltaV | 140 |

## Schedule

| ID | WBS | Task | Type | Duration | Start | Finish | Predecessors | Remaining | Total slack | Free slack | Resources | Work | Cost |
| --- | --- | --- | --- | --- | --- | --- | --- | --- | --- | --- | --- | --- | --- |
| 1 | 1 | **PROJECTNAME** |  | 128d | 2020-06-30 A | 2020-12-24 |  | 128d | 0d |  |  | 301.1h | 41,997.06 |
| 2 | 1.1 | Project Management | manual | 128d | 2020-06-30 A | 2020-12-24 |  | 128d |  |  | Paul McKinney [6%] | 31.5h | 4,252.5 |
| 3 | 1.2 | Meetings |  | 31d | 2020-06-30 | 2020-08-12 | 2SS |  | 0d |  | LEAD DeltaV [2.4%]; ENGR2 DeltaV [2.4%] | 12h | 1,680 |
| 4 | 1.3 | Troubleshooting |  | 8.42d | 2020-10-07 | 2020-10-20 | 36 |  | 0d |  | ENGR2 DeltaV [75%] | 50.5h | 7,070 |
| 5 | 1.4 | **Design** |  | 49.47d | 2020-06-30 | 2020-09-07 |  |  | 0d |  |  | 54h | 7,560 |
| 6 | 1.4.1 | Requirements Documents | milestone | 0d | 2020-06-30 | 2020-06-30 | 2SS |  | 0d |  |  |  |  |
| 7 | 1.4.2 | DeltaV Design Documents |  | 6.67d | 2020-07-23 | 2020-08-14 | 23 |  | 0d |  | ENGR2 DeltaV [75%] | 40h | 5,600 |
| 8 | 1.4.3 | DeltaV Mobile Design Document |  | 0.33d | 2020-08-14 | 2020-08-28 | 7 |  | 7.04d | 0d | ENGR2 DeltaV [75%] | 2h | 280 |
| 9 | 1.4.4 | Change Control/LogBook |  | 2d | 2020-06-30 | 2020-07-01 | 6 |  | 0d |  | LEAD DeltaV [75%] | 12h | 1,680 |
| 10 | 1.4.5 | Change Control Approval |  | 2w | 2020-07-02 | 2020-07-15 | 9 |  | 0d |  |  |  |  |
| 11 | 1.4.6 | Design Document Approval |  | 2w | 2020-08-14 | 2020-09-07 | 7 |  | 0d |  |  |  |  |
| 12 | 1.4.7 | DeltaV Mobile Design Document Approval | milestone | 0d | 2020-08-28 | 2020-08-28 | 8 |  | 7.04d | 6.03d |  |  |  |
| 13 | 1.4.8 | Requirements Approval |  | 1w | 2020-07-16 | 2020-07-22 | 10 |  | 0d |  |  |  |  |
| 14 | 1.5 | **Hardware** |  | 12d | 2020-09-07 | 2020-09-23 |  |  | 0d |  |  | 24h | 3,360 |
| 15 | 1.5.1 | Hardware Installation And Configuration |  | 6d | 2020-09-07 | 2020-09-15 | 11 |  | 0d |  | LEAD DeltaV [25%] | 12h | 1,680 |
| 16 | 1.5.2 | Drawings |  | 6d | 2020-09-15 | 2020-09-23 | 15 |  | 0d |  | Charlie Frechin [25%] | 12h | 1,680 |
| 17 | 1.6 | **Development** |  | 18.56d | 2020-06-30 | 2020-07-24 |  |  | 0d |  |  | 27.6h | 3,864.56 |
| 18 | 1.6.1 | DeltaV Graphics |  | 0.02d | 2020-06-30 | 2020-06-30 | 6 |  | 5.42d | 0d | ENGR2 DeltaV [80%] | 0.1h | 14.56 |
| 19 | 1.6.2 | DeltaV Modules |  | 3.75d | 2020-06-30 | 2020-07-15 | 18 |  | 5.42d |  | ENGR2 DeltaV [50%] | 15h | 2,100 |
| 20 | 1.6.3 | DeltaV Sequence | milestone | 0d | 2020-06-30 | 2020-06-30 | 18 |  | 16.98d |  | ENGR2 DeltaV [85%] |  |  |
| 21 | 1.6.4 | OSI Pi Configuration |  | 0.94d | 2020-07-23 | 2020-07-23 | 19, 13 |  | 0d |  | ENGR2 DeltaV | 7.5h | 1,050 |
| 22 | 1.6.5 | DeltaV Mobile Configuration |  | 0.62d | 2020-07-23 | 2020-07-24 | 21 |  | 0d |  | ENGR2 DeltaV | 5h | 700 |
| 23 | 1.6.6 | Customer Graphic Review/Training | milestone | 0d | 2020-07-22 | 2020-07-22 | 20, 13 |  | 0d |  | ENGR2 DeltaV; LEAD DeltaV |  |  |
| 24 | 1.7 | **Test Planning** |  | 30.73d | 2020-07-23 | 2020-09-03 |  |  | 0d |  |  | 12h | 1,680 |
| 25 | 1.7.1 | Create Test Protocol |  | 6d | 2020-07-23 | 2020-08-17 | 20, 23 |  | 0d |  | ENGR2 DeltaV [25%] | 12h | 1,680 |
| 26 | 1.7.2 | Approve Test Protocol |  | 12.75d | 2020-08-17 | 2020-09-03 | 25 |  | 0d |  |  |  |  |

| ID | WBS | Task | Type | Duration | Start | Finish | Predecessors | Baseline 1 start | Baseline 1 finish | Total slack | Resources | Work | Cost |
| --- | --- | --- | --- | --- | --- | --- | --- | --- | --- | --- | --- | --- | --- |
| 27 | 1.8 | **System Integration** |  | 4.24d | 2020-09-03 | 2020-09-09 |  |  |  | 0d |  | 27h | 3,780 |
| 28 | 1.8.1 | Dry Run Test Cases |  | 1.47d | 2020-09-03 | 2020-09-07 | 26 |  |  | 0d | ENGR2 DeltaV [85%] | 10h | 1,400 |
| 29 | 1.8.2 | DeltaV Test Execution |  | 2.5d | 2020-09-07 | 2020-09-09 | 23, 28, 10, 11, 12, 13 |  |  | 1.01d | ENGR2 DeltaV [85%] | 17h | 2,380 |
| 30 | 1.8.3 | Testing Assistance | milestone | 0d | 2020-09-03 | 2020-09-03 | 28SS |  |  | 0d | ENGR2 DeltaV [30%] |  |  |
| 31 | 1.9 | **System Commissioning** |  | 35.3d | 2020-09-03 | 2020-10-23 |  | 2019-03-11 | 2019-03-29 | 0d |  | 62.5h | 8,750 |
| 32 | 1.9.1 | DeltaV Mobile Test Case Execution |  | 3.25d | 2020-09-03 | 2020-09-08 | 26 |  |  | 0d | ENGR2 DeltaV [50%] | 13h | 1,820 |
| 33 | 1.9.2 | OSI PI Test Case Execution |  | 2d | 2020-09-08 | 2020-09-10 | 32 |  |  | 0d | LEAD DeltaV [50%] | 8h | 1,120 |
| 34 | 1.9.3 | Code Migration | milestone | 0d | 2020-09-10 | 2020-09-10 | 29, 33 |  |  | 0d | LEAD DeltaV |  |  |
| 35 | 1.9.4 | Electrical And Hardware Installed | milestone | 0d | 2020-09-10 | 2020-09-10 | 34 |  |  | 0d |  |  |  |
| 36 | 1.9.5 | Loop Checks |  | 18.75d | 2020-09-10 | 2020-10-07 | 35 |  |  | 0d | ENGR2 DeltaV [25%] | 37.5h | 5,250 |
| 37 | 1.9.6 | Create Test Summary |  | 1d | 2020-10-07 | 2020-10-08 | 36 | 2019-03-22 | 2019-03-22 | 0d | ENGR2 DeltaV [50%] | 4h | 560 |
| 38 | 1.9.7 | Approve Test Summary |  | 1w | 2020-10-08 | 2020-10-15 | 37 | 2019-03-22 | 2019-03-29 | 0d |  |  |  |
| 39 | 1.9.8 | Update Trace Matrix | milestone | 0w | 2020-10-15 | 2020-10-15 | 38 |  |  | 0d | LEAD DeltaV [50%] |  |  |
| 40 | 1.9.9 | Approve Trace Matrix |  | 1w | 2020-10-15 | 2020-10-23 | 39 |  |  | 0d |  |  |  |
